# BeeHave

Schedule from MS Project, 2022-10-31 to 2023-01-25, costs in €, A marks actual dates.
C07

## Calendars

- Standard: Mon-Fri 09:00-13:00, 14:00-18:00; Sat off; Sun 09:00-13:00, 14:00-18:00. Exceptions (off unless hours are given): 2022-12-10 09:00-13:00, 14:00-18:00.

## Resources

| Resource |
| --- |
| Antonio Della Porta |
| Giulio Triggiani |
| Ciro Maiorino |
| Viviana Pentangelo |
| Gianmario Voria |
| Alessio Casolaro |
| Luca Topo |
| Nicola Pagliara |

## Schedule

| ID | WBS | Task | Type | Duration | Start | Finish | Predecessors | Complete | Remaining | Actual start | Actual finish | Constraint | Work | Actual work | Cost | Baseline cost | Actual cost |
| --- | --- | --- | --- | --- | --- | --- | --- | --- | --- | --- | --- | --- | --- | --- | --- | --- | --- |
| 1 | 1 | **BeeHave** |  | 76d? | 2022-10-31 A | 2023-01-25 |  | 93% | 5.58d? |  |  |  | 244h | 199.2h | 17,080 | 26,180 | 15,512 |
| 2 | 1.1 | **Requirements Elicitation and Analysis** |  | 23d | 2022-10-31 | 2022-11-25 |  | 100% |  | 2022-11-01 | 2022-11-24 |  | 66h | 66h | 4,620 | 6,510 | 4,620 |
| 3 | 1.1.1 | **Elicitation** |  | 14d | 2022-10-31 | 2022-11-15 |  | 100% |  | 2022-11-01 | 2022-11-11 |  | 34h | 34h | 2,380 | 3,920 | 2,380 |
| 4 | 1.1.1.1 | Analisi preliminare |  | 1.5d | 2022-11-01 A | 2022-11-02 A |  | 100% |  |  |  |  | 4h | 4h | 280 | 560 | 280 |
| 5 | 1.1.1.2 | Identificazione requisiti funzionali |  | 2d | 2022-11-04 A | 2022-11-06 A | 4 | 100% |  |  |  |  | 8h | 8h | 560 | 560 | 560 |
| 6 | 1.1.1.3 | Identificazione attori |  | 0.25d | 2022-11-03 A | 2022-11-03 A | 4 | 100% |  |  |  |  | 2h | 2h | 140 | 560 | 140 |
| 7 | 1.1.1.4 | Individuazione dei Requisiti NON Funzionali |  | 1.25d | 2022-11-07 A | 2022-11-08 A | 6 | 100% |  |  |  |  | 5h | 5h | 350 | 560 | 350 |
| 8 | 1.1.1.5 | Scrittura di scenari e casi d'uso |  | 1.88d | 2022-11-10 A | 2022-11-11 A | 5 | 100% |  |  |  | finish no earlier than 2022-11-15 | 15h | 15h | 1,050 | 1,120 | 1,050 |
| 9 | 1.1.2 | **Analysis** |  | 9d | 2022-11-15 A | 2022-11-24 A | 3 | 100% |  |  |  |  | 32h | 32h | 2,240 | 2,310 | 2,240 |
| 10 | 1.1.2.1 | **Costruzione del modello ad oggetti** |  | 4d | 2022-11-15 A | 2022-11-18 A |  | 100% |  |  |  |  | 12h | 12h | 840 | 1,190 | 840 |
| 11 | 1.1.2.1.1 | Individuazione degli oggetti (Entity, Boundary, Control) a partire da RF, scenari e casi d'uso |  | 1.12d | 2022-11-15 A | 2022-11-16 A |  | 100% |  |  |  |  | 6h | 6h | 420 | 350 | 420 |
| 12 | 1.1.2.1.2 | Costruzione del class diagram usando gli Entity |  | 2.25d | 2022-11-16 A | 2022-11-18 A | 11 | 100% |  |  |  |  | 6h | 6h | 420 | 560 | 420 |
| 13 | 1.1.2.2 | **Costruzione del modello dinamico** |  | 6d | 2022-11-19 | 2022-11-24 A | 10 | 100% |  | 2022-11-20 |  |  | 20h | 20h | 1,400 | 1,120 | 1,400 |
| 14 | 1.1.2.2.1 | Costruzione dei Sequence Diagrams |  | 2d | 2022-11-20 A | 2022-11-21 A |  | 100% |  |  |  |  | 8h | 8h | 560 | 560 | 560 |
| 15 | 1.1.2.2.2 | Costruzione degli state chart diagrams e activity diagrams |  | 1.5d | 2022-11-21 A | 2022-11-22 A |  | 100% |  |  |  |  | 6h | 6h | 420 | 140 | 420 |
| 16 | 1.1.2.2.3 | Costruzione dei Navigational Paths e mockup |  | 1.5d | 2022-11-23 A | 2022-11-24 A | 14 | 100% |  |  |  |  | 6h | 6h | 420 | 140 | 420 |
| 17 | 1.2 | **System Design** |  | 8d | 2022-11-26 A | 2022-12-03 | 2 | 100% |  |  | 2022-12-02 |  | 26h | 26h | 1,820 | 2,590 | 1,820 |
| 18 | 1.2.1 | **Identificare gli obiettivi di design** |  | 2d | 2022-11-26 A | 2022-11-27 A |  | 100% |  |  |  |  | 7h | 7h | 490 | 420 | 490 |
| 19 | 1.2.1.1 | Identificazione dei design goals |  | 1d | 2022-11-26 A | 2022-11-27 A |  | 100% |  |  |  | finish no earlier than 2022-11-27 | 5h | 5h | 350 | 280 | 350 |
| 20 | 1.2.1.2 | Identificare I trade-offs design goal |  | 0.5d | 2022-11-27 A | 2022-11-27 A | 19 | 100% |  |  |  | finish no earlier than 2022-11-27 | 2h | 2h | 140 | 140 | 140 |
| 21 | 1.2.2 | **Individuare la decomposizione in sottosistemi** |  | 3d | 2022-11-27 A | 2022-11-29 | 18 | 100% |  |  | 2022-11-28 |  | 8h | 8h | 560 | 420 | 560 |
| 22 | 1.2.2.1 | Identificazione dei sottosistemi | manual | 1d | 2022-11-27 A | 2022-11-27 A |  | 100% |  |  |  |  | 4h | 4h | 280 |  | 280 |
| 23 | 1.2.2.2 | Definizione diagramma delle componenti |  | 1d | 2022-11-27 A | 2022-11-27 A |  | 100% |  |  |  | finish no earlier than 2022-11-28 | 2h | 2h | 140 | 140 | 140 |
| 24 | 1.2.2.3 | Definizione servizi dei sottosistemi |  | 0.5d | 2022-11-28 A | 2022-11-28 A |  | 100% |  |  |  | finish no earlier than 2022-11-29 | 2h | 2h | 140 | 280 | 140 |

| ID | WBS | Task | Type | Duration | Start | Finish | Predecessors | Complete | Remaining | Actual start | Actual finish | Total slack | Constraint | Work | Actual work | Cost | Baseline cost | Actual cost |
| --- | --- | --- | --- | --- | --- | --- | --- | --- | --- | --- | --- | --- | --- | --- | --- | --- | --- | --- |
| 25 | 1.2.3 | **Definizione specifiche del sistema** |  | 4d | 2022-11-29 A | 2022-12-02 A | 21 | 100% |  |  |  |  |  | 11h | 11h | 770 | 1,470 | 770 |
| 26 | 1.2.3.1 | Definizione architettura e flusso del sistema |  | 1.17d | 2022-11-29 A | 2022-11-30 A |  | 100% |  |  |  |  | finish no earlier than 2020-11-29 | 2h | 2h | 140 | 70 | 140 |
| 27 | 1.2.3.2 | Definire la matrice per il controllo degli accessi |  | 2d | 2022-11-29 A | 2022-11-30 A |  | 100% |  |  |  |  | finish no earlier than 2020-11-30 | 3h | 3h | 210 | 70 | 210 |
| 28 | 1.2.3.3 | Specifica modalità di utilizzo dati persistenti |  | 2d | 2022-11-30 A | 2022-12-01 A |  | 100% |  |  |  |  | finish no earlier than 2020-12-01 | 2h | 2h | 140 | 70 | 140 |
| 29 | 1.2.3.4 | Identificare le Boundary Conditions |  | 2d | 2022-12-01 A | 2022-12-02 A |  | 100% |  |  |  |  | finish no earlier than 2020-12-02 | 4h | 4h | 280 | 140 | 280 |
| 30 | 1.3 | **System Test Design** |  | 3d | 2022-12-05 A | 2022-12-07 A | 17 | 100% |  |  |  |  |  | 12h | 12h | 840 | 1,120 | 840 |
| 31 | 1.3.1 | Identificazione dei casi di test funzionali tramite category partition |  | 1.75d | 2022-12-05 A | 2022-12-06 A |  | 100% |  |  |  |  |  | 7h | 7h | 490 | 560 | 490 |
| 32 | 1.3.2 | Scrittura dei casi di test |  | 0.88d | 2022-12-06 A | 2022-12-07 A | 31 | 100% |  |  |  |  |  | 5h | 5h | 350 | 560 | 350 |
| 33 | 1.4 | Consegna intermedia | milestone | 0d | 2023-01-23 | 2023-01-23 | 17, 2, 30, 48 |  |  |  |  | 2d | start no earlier than 2022-12-12 |  |  |  |  |  |
| 34 | 1.5 | **Object Design** |  | 9d | 2022-12-07 A | 2022-12-15 | 33 | 100% |  |  | 2022-12-14 |  |  | 14h | 14h | 980 | 1,820 | 980 |
| 35 | 1.5.1 | **Riuso** |  | 3d | 2022-12-07 A | 2022-12-09 A |  | 100% |  |  |  |  |  | 5h | 5h | 350 | 420 | 350 |
| 36 | 1.5.1.1 | Identificazione e integrazione di Design Patterns utili |  | 2.12d | 2022-12-07 A | 2022-12-09 A |  | 100% |  |  |  |  | finish no earlier than 2022-12-09 | 5h | 5h | 350 | 280 | 350 |
| 37 | 1.5.2 | **Specifica delle interfacce** |  | 6d | 2022-12-09 A | 2022-12-14 A |  | 100% |  |  |  |  |  | 9h | 9h | 630 | 1,120 | 630 |
| 38 | 1.5.2.1 | Identificazione dei packages a partire dai sottosistemi |  | 1d | 2022-12-09 A | 2022-12-10 A |  | 100% |  |  |  |  | finish no earlier than 2022-12-10 | 2h | 2h | 140 | 70 | 140 |
| 39 | 1.5.2.2 | Specifica interfacce e parametri |  | 0.44d | 2022-12-11 A | 2022-12-14 A |  | 100% |  |  |  |  | finish no earlier than 2022-12-14 | 7h | 7h | 490 | 560 | 490 |
| 40 | 1.6 | **System Implementation and Testing** |  | 25d? | 2022-12-27 A | 2023-01-24 | 34 | 82% | 4.54d? |  |  |  |  | 115h | 70.2h | 8,050 | 9,100 | 6,482 |
| 41 | 1.6.1 | Setup dell'ambiente di lavoro |  | 0.5d | 2022-12-27 A | 2022-12-27 A |  | 100% |  |  |  |  | finish no earlier than 2022-12-27 | 1h | 1h | 70 | 140 | 70 |
| 42 | 1.6.2 | Setup della repository | manual | 1d? | 2022-12-27 A | 2022-12-27 A |  | 100% |  |  |  |  |  | 1h | 1h | 70 |  | 70 |
| 43 | 1.6.3 | Setup del DB |  | 0.5d | 2022-12-27 A | 2022-12-27 A | 41 | 100% |  |  |  |  | finish no earlier than 2022-12-27 | 1h | 1h | 70 | 280 | 70 |
| 44 | 1.6.4 | Implementazione e testing delle funzionalità a priorità elevata attraverso Scrum |  | 22d | 2022-12-28 A | 2023-01-22 | 43 | 80% | 4.36d |  |  | 3d | finish no earlier than 2023-01-22 | 112h | 67.2h | 7,840 | 5,600 | 6,272 |
| 45 | 1.7 | **Training** |  | 75d | 2022-10-31 | 2023-01-24 |  | 100% |  | 2022-12-28 | 2023-01-09 |  |  | 7h | 7h | 490 |  | 490 |
| 46 | 1.7.1 | Training su implementazione |  | 1.53d | 2022-12-28 A | 2022-12-29 A |  | 100% |  |  |  |  |  | 5h | 5h | 350 | 3,360 | 350 |
| 47 | 1.7.2 | Training testing |  | 0.25d | 2023-01-09 A | 2023-01-09 A |  | 100% |  |  |  |  |  | 2h | 2h | 140 |  | 140 |
| 48 | 1.8 | **Final Documents** |  | 3d | 2023-01-20 A | 2023-01-23 A |  | 100% |  |  |  |  |  | 4h | 4h | 280 | 1,120 | 280 |
| 49 | 1.8.1 | Esecuzione di tutti i casi di test e report del risultato |  | 0.5d | 2023-01-20 A | 2023-01-20 A |  | 100% |  |  |  |  |  | 2h | 2h | 140 | 560 | 140 |
| 50 | 1.8.2 | Scrittura di manuale utente e di installazione |  | 0.5d | 2023-01-23 A | 2023-01-23 A |  | 100% |  |  |  |  |  | 2h | 2h | 140 | 560 | 140 |
| 51 | 1.9 | Consegna finale | milestone | 0d | 2023-01-24 | 2023-01-24 | 34, 40 |  |  |  |  | 1d | start no earlier than 2023-01-24 |  |  |  |  |  |
